# CEE240F22

Schedule from Primavera P6, 2022-11-07 to 2023-10-02, data date 2022-11-06.

## Calendars

- Corporate - Standard Full Time: Mon-Fri 08:00-16:00; Sat-Sun off.

## Schedule

| ID | Activity | Duration | Start | Finish | Predecessors | Total float |
| --- | --- | --- | --- | --- | --- | --- |
| A1000 | NTP | 0d | 2022-11-07 | 2022-11-07 |  | 0d |
| A1001 | submit shut down request for facilities | 1d | 2022-11-07 | 2022-11-07 | A1000 | 0d |
| A1002 | demo ceilings GL 6.5, M.4 | 2d | 2022-11-08 | 2022-11-09 | A1001 | 0d |
| A1003 | erect temp barrier, GL 6.5, M.4 | 3d | 2022-11-10 | 2022-11-14 | A1002 | 0d |
| A1004 | demo exterior walls GL 5.7 M | 3d | 2022-11-15 | 2022-11-17 | A1003 | 0d |
| A1005 | demo interior walls GL 5.7 - 7.1 M.4 | 3d | 2022-11-18 | 2022-11-22 | A1004 | 0d |
| A1006 | remove, salvage column covers, GL 7.1 M | 1d | 2022-11-23 | 2022-11-23 | A1005 | 0d |
| A1007 | demo ceilings 1L 7.1, M.4 | 2d | 2022-11-24 | 2022-11-25 | A1006 | 0d |
| A1008 | remove, dispose 8" san. sewer GL 5.7 D.4 | 3d | 2022-11-28 | 2022-11-30 | A1007 | 0d |
| A1009 | erect temp barrier 1L M.4 | 3d | 2022-12-01 | 2022-12-05 | A1008 | 0d |
| A1010 | demo exterior walls 1L 5.7 M | 3d | 2022-12-06 | 2022-12-08 | A1009 | 0d |
| A1011 | demo interior walls 1L 6.5 M.4 | 1d | 2022-12-09 | 2022-12-09 | A1010 | 0d |
| A1012 | remove, salvage column covers, GL 7.1 M | 3d | 2022-12-12 | 2022-12-14 | A1011 | 0d |
| A1013 | remove, dispose 6" forced storm line GL 6.5 D.4 - M.4 | 3d | 2022-12-15 | 2022-12-19 | A1012 | 0d |
| A1014 | cut and cap 6" storm drain GL 5.7 M.4 - N | 1d | 2022-12-20 | 2022-12-20 | A1013 | 0d |
| A1015 | raise ext. conduit into ceiling cavity GL 10.5 B | 3d | 2022-12-21 | 2022-12-23 | A1014 | 0d |
| A1016 | verify location of underground utilities sub-GL, Sector B | 1d | 2022-12-26 | 2022-12-26 | A1015 | 0d |
| A1017 | demo existing slab as needed sub-GL, Sector B | 2d | 2022-12-27 | 2022-12-28 | A1016 | 0d |
| A1018 | excavate soil sub-GL, Sector B | 2d | 2022-12-29 | 2022-12-30 | A1017 | 0d |
| A1019 | excavate elevator pit sub-GL, Sector B | 1d | 2023-01-02 | 2023-01-02 | A1018 | 0d |
| A1020 | erect shoring, timber lagging sub-GL, Sector B | 4d | 2023-01-03 | 2023-01-06 | A1019 | 0d |
| A1021 | install piles sub-GL, Sector B | 4d | 2023-01-09 | 2023-01-12 | A1020 | 0d |
| A1022 | formwork, rebar, for pile caps sub-GL, Sector B | 8d | 2023-01-13 | 2023-01-24 | A1021 | 0d |
| A1023 | install anchor and bolt connections to moment frame sub-GL, Sector B | 2d | 2023-01-25 | 2023-01-26 | A1022 | 0d |
| A1024 | pour concrete, strip formwork for pile caps sub-GL, Sector B | 12d | 2023-01-27 | 2023-02-13 | A1023 | 0d |
| A1025 | formwork for footing sub-GL, Sector B | 2d | 2023-02-14 | 2023-02-15 | A1024 | 0d |
| A1026 | rebar, pour, strip footings GL, Sector B | 10d | 2023-02-16 | 2023-03-01 | A1025 | 0d |
| A1027 | formwork for foundations sub-GL, Sector B | 2d | 2023-03-02 | 2023-03-03 | A1026 | 0d |
| A1028 | lay pipes, conduits sub-GL, sector B | 5d | 2023-03-06 | 2023-03-10 | A1027 | 0d |
| A1029 | subgrade preparation GL, Sector B | 2d | 2023-03-13 | 2023-03-14 | A1028 | 0d |
| A1030 | vapor barrier GL, Sector B | 4d | 2023-03-15 | 2023-03-20 | A1029 | 0d |
| A1031 | rebar connecting new foundations to (E) GL, Sector B | 4d | 2023-03-21 | 2023-03-24 | A1030 | 0d |
| A1032 | MEP in deck GL, sector B | 3d | 2023-03-27 | 2023-03-29 | A1031 | 0d |
| A1033 | rebar, pour, strip foundations GL, Sector B | 10d | 2023-03-30 | 2023-04-12 | A1032 | 0d |
| A1034 | erect columns GL, Sector B | 4d | 2023-04-13 | 2023-04-18 | A1033 | 0d |
| A1035 | erect beams GL, Sector B | 4d | 2023-04-19 | 2023-04-24 | A1034 | 0d |
| A1036 | MEP in deck 1L, sector B | 3d | 2023-04-25 | 2023-04-27 | A1035 | 0d |
| A1037 | erect steel deck 1L, Sector B | 4d | 2023-04-28 | 2023-05-03 | A1036 | 0d |
| A1038 | erect concrete deck 1L, Sector B | 4d | 2023-05-04 | 2023-05-09 | A1037 | 0d |
| A1039 | erect columns 1L, Sector B | 4d | 2023-05-10 | 2023-05-15 | A1038 | 0d |
| A1040 | erect beams 1L, Sector B | 4d | 2023-05-16 | 2023-05-19 | A1039 | 0d |
| A1041 | MEP in deck 2L, sector B | 3d | 2023-05-22 | 2023-05-24 | A1040 | 0d |
| A1042 | erect steel deck 2L, Sector B | 4d | 2023-05-25 | 2023-05-30 | A1041 | 0d |
| A1043 | erect concrete deck 2L, Sector B | 4d | 2023-05-31 | 2023-06-05 | A1042 | 0d |
| A1044 | erect columns 2L, Sector B | 4d | 2023-06-06 | 2023-06-09 | A1043 | 0d |
| A1045 | erect steel deck 3L, Sector B | 4d | 2023-06-12 | 2023-06-15 | A1044 | 0d |
| A1046 | curtain wall GL, Sector B | 15d | 2023-06-16 | 2023-07-06 | A1045 | 0d |
| A1047 | curtain wall 1L, Sector B | 15d | 2023-07-07 | 2023-07-27 | A1046 | 0d |
| A1048 | curtain wall 2L, Sector B | 15d | 2023-07-28 | 2023-08-17 | A1047 | 0d |
| A1049 | erect temp barrier, west of new main connector, GL, Sector B | 3d | 2023-08-18 | 2023-08-22 | A1048 | 0d |
| A1050 | erect temp barrier, west of new main connector, 1L, Sector B | 3d | 2023-08-23 | 2023-08-25 | A1049 | 0d |
| A1051 | erect temp barrier, west of new main connector, 2L, Sector B | 3d | 2023-08-28 | 2023-08-30 | A1050 | 0d |
| A1052 | remove roof assembly 2L (E) | 5d | 2023-08-31 | 2023-09-06 | A1051 | 0d |
| A1053 | remove parapet, coping 2L (E) | 5d | 2023-09-07 | 2023-09-13 | A1052 | 0d |
| A1054 | erect construction barrier 2L (E) | 3d | 2023-09-14 | 2023-09-18 | A1053 | 0d |
| A1055 | remove ext window 2L (E) | 5d | 2023-09-19 | 2023-09-25 | A1054 | 0d |
| A1056 | demo part of exterior wall 2L (E) | 5d | 2023-09-26 | 2023-10-02 | A1055 | 0d |
